Schedule from MS Project XML, 2017-06-01 to 2017-08-30.

## Calendars

- Estándar: Mon-Fri 09:00-13:00, 15:00-19:00; Sat-Sun off.

## Resources

| Resource |
| --- |
| Não atribuído |
| Especialista EeS |
| Arquiteto de EeS |
| Analistas |
| Coordinacion |

## Schedule

| ID | WBS | Task | Type | Duration | Start | Finish | Predecessors | Total slack | Constraint | Resources |
| --- | --- | --- | --- | --- | --- | --- | --- | --- | --- | --- |
| 1 | 1 | Hito: Inicio de Proyecto | milestone | 0d | 2017-06-01 | 2017-06-01 |  | 2925d | start no earlier than 2017-06-01 |  |
| 2 | 2 | **Pruebas de Rendimiento Nueva Plataforma** |  | 64.5d | 2017-06-01 | 2017-08-30 | 1 |  |  |  |
| 3 | 2.1 | Establecer equipo de trabajo |  | 5d | 2017-06-01 | 2017-06-08 |  | 5950d |  | Coordinacion |
| 4 | 2.2 | **Alcances** |  | 18.62d | 2017-06-07 | 2017-07-03 |  | 4187.5d |  |  |
| 5 | 2.2.1 | Definición de Alcances |  | 12.75d | 2017-06-07 | 2017-06-23 |  | 2537.5d | start no earlier than 2017-06-07 | Especialista EeS; Arquiteto de EeS |
| 6 | 2.2.2 | Definición de Funcionalidades |  | 14.62d | 2017-06-12 | 2017-06-30 |  | 4187.5d | start no earlier than 2017-06-12 | Analistas [50%]; Arquiteto de EeS [50%] |
| 7 | 2.2.3 | Definición del Comportamiento esperado |  | 4.62d | 2017-06-12 | 2017-06-16 |  | 5187.5d | start no earlier than 2017-06-12 | Coordinacion; Especialista EeS; Arquiteto de EeS |
| 8 | 2.2.4 | Hito: Fin Alcances | milestone | 1d | 2017-06-30 | 2017-07-03 | 5, 6, 7 | 4187.5d |  |  |
| 9 | 2.3 | **Definición Herramientas QA** |  | 12.75d | 2017-06-23 | 2017-07-12 |  | 3500d |  |  |
| 10 | 2.3.1 | Evaluación alternativas |  | 2.75d | 2017-06-23 | 2017-06-28 | 5 | 3487.5d |  | Especialista EeS; Arquiteto de EeS |
| 11 | 2.3.2 | Test de Adherencia |  | 10d | 2017-06-28 | 2017-07-12 | 10 | 3500d |  | Especialista EeS |
| 12 | 2.3.3 | Hito: Fin Definición Herramientas QA | milestone | 0d | 2017-07-12 | 2017-07-12 | 11 | 3500d |  |  |
| 13 | 2.4 | **Preparación del Monitoreo de Servidores** |  | 24.75d | 2017-06-23 | 2017-07-28 |  | 2300d |  |  |
| 14 | 2.4.1 | Definición de Estrategia de Monitoreo |  | 0.75d | 2017-06-23 | 2017-06-26 | 5 | 2550d |  | Especialista EeS; Arquiteto de EeS |
| 15 | 2.4.2 | Documentación de Arquitectura de las funcionalidades |  | 3d | 2017-06-26 | 2017-06-29 | 14 | 2550d |  | Arquiteto de EeS |
| 16 | 2.4.3 | Definición de Agentes requeridos |  | 3d | 2017-06-29 | 2017-07-04 | 15 | 2550d |  | Especialista EeS |
| 17 | 2.4.4 | Cotizacion de Agentes |  | 3d | 2017-07-04 | 2017-07-07 | 16 | 2550d |  | Coordinacion |
| 18 | 2.4.5 | Solicitud de Compra |  | 3d | 2017-07-07 | 2017-07-12 | 17 | 2550d |  |  |
| 19 | 2.4.6 | Compra de Agentes |  | 5d | 2017-07-12 | 2017-07-19 | 18 | 2550d |  |  |
| 20 | 2.4.7 | Instalación de Agentes |  | 4.62d | 2017-07-19 | 2017-07-26 | 19 | 2525d |  | Especialista EeS |
| 21 | 2.4.8 | Prueba de Agentes |  | 6.5d | 2017-07-20 | 2017-07-28 |  | 2300d | start no earlier than 2017-07-20 | Especialista EeS |
| 22 | 2.4.9 | Hito: Fin Preparación del Monitoreo de Servidores | milestone | 0d | 2017-07-28 | 2017-07-28 | 21 | 2300d |  |  |
| 23 | 2.5 | **Definir Plan de Pruebas** |  | 17.5d | 2017-06-12 | 2017-07-05 |  | 4000d |  |  |
| 24 | 2.5.1 | Borrador de Plan de Pruebas |  | 10d | 2017-06-12 | 2017-06-26 | 1 | 4000d | start no earlier than 2017-06-12 | Arquiteto de EeS |
| 25 | 2.5.2 | Revisión del Plan de Pruebas |  | 2.5d | 2017-06-26 | 2017-06-28 | 24 | 3987.5d |  | Arquiteto de EeS; Especialista EeS |
| 26 | 2.5.3 | Correcciones al Plan de Pruebas |  | 2.62d | 2017-06-28 | 2017-07-03 | 25 | 3987.5d |  | Arquiteto de EeS; Especialista EeS |
| 27 | 2.5.4 | Validación del Plan de Pruebas |  | 2.38d | 2017-07-03 | 2017-07-05 | 26 | 4000d |  | Especialista EeS; Coordinacion |
| 28 | 2.5.5 | Hito: Aprobación de Plan de Pruebas (Nexus) | milestone | 0d | 2017-07-05 | 2017-07-05 | 27 | 4000d |  |  |

| ID | WBS | Task | Type | Duration | Start | Finish | Predecessors | Total slack | Constraint | Resources |
| --- | --- | --- | --- | --- | --- | --- | --- | --- | --- | --- |
| 29 | 2.6 | **Estrategia de Datos** |  | 30d | 2017-06-19 | 2017-07-31 |  | 2250d |  |  |
| 30 | 2.6.1 | Definición de datos requeridos |  | 9.5d | 2017-06-19 | 2017-06-30 |  | 4300d | start no earlier than 2017-06-19 |  |
| 31 | 2.6.2 | Preparación de automatizaciones |  | 19.88d | 2017-07-03 | 2017-07-28 |  | 2275d | start no earlier than 2017-07-03 | Especialista EeS |
| 32 | 2.6.3 | Generación de datos |  | 20d | 2017-07-03 | 2017-07-31 |  | 1250d | start no earlier than 2017-07-03 | Analistas |
| 33 | 2.6.4 | Hito: Datos preparados | milestone | 0d | 2017-07-31 | 2017-07-31 | 32 | 2250d |  |  |
| 34 | 2.7 | Hito: Visto Bueno para iniciar Pruebas | milestone | 0d | 2017-07-31 | 2017-07-31 | 8, 12, 22, 28, 33 | 2250d |  |  |
| 35 | 2.8 | **Pruebas de Escalabilidad** |  | 16d | 2017-07-31 | 2017-08-22 |  | 650d |  |  |
| 36 | 2.8.1 | Ajustes previos |  | 10d | 2017-07-31 | 2017-08-14 | 32 | 1250d |  | Especialista EeS |
| 37 | 2.8.2 | Ejecución |  | 6.5d | 2017-07-31 | 2017-08-08 |  | 1600d | start no earlier than 2017-07-31 | Especialista EeS; Arquiteto de EeS |
| 38 | 2.8.3 | Recopilación de Información |  | 7.38d | 2017-07-31 | 2017-08-09 |  | 1500d | start no earlier than 2017-07-31 | Especialista EeS; Arquiteto de EeS |
| 39 | 2.8.4 | Generación de Informe |  | 1d | 2017-08-21 | 2017-08-22 |  |  | start no earlier than 2017-08-21 | Especialista EeS; Arquiteto de EeS |
| 40 | 2.8.5 | Hito: Fin Pruebas de Escalabilidad | milestone | 0d | 2017-08-22 | 2017-08-22 | 39 |  |  |  |
| 41 | 2.9 | **Pruebas de Stress** |  | 4d | 2017-08-22 | 2017-08-25 |  |  |  |  |
| 42 | 2.9.1 | Ajustes previos |  | 4d | 2017-08-22 | 2017-08-25 | 40 |  |  |  |
| 43 | 2.9.2 | Hito: Fin Pruebas de Stress | milestone | 0d | 2017-08-25 | 2017-08-25 | 42 |  |  |  |
| 44 | 2.10 | Reunión de Entrega Resultados y Conclusiones |  | 2.5d | 2017-08-28 | 2017-08-30 | 43 |  |  | Especialista EeS; Coordinacion |
| 45 | 2.11 | Hito: Fin de Proyecto | milestone | 0d | 2017-08-30 | 2017-08-30 | 44 |  |  |  |
